# Cronograma

How a schedule from MS Project changed from version to version. A marks actual dates.

## Version 1 (saved 2017-06-05)

Note of the change: Documentos

| ID | WBS | Task | Duration | Start | Finish | Predecessors | Complete | Total float |
| --- | --- | --- | --- | --- | --- | --- | --- | --- |
| 1 | 1 | **Sistema Contabil** | 67d? | 2017-03-30 | 2017-06-30 |  | 93% |  |
| 2 | 1.1 | **Analise** | 3d | 2017-04-23 | 2017-04-25 |  | 100% |  |
| 3 |  | DRE | 5d | 2017-04-24 A | 2017-04-28 A |  | 100% |  |
| 4 |  | Orçamento Preliminar | 2d | 2017-05-01 A | 2017-05-02 A | 3 | 100% |  |
| 5 |  | Cronograma Premilinar | 2d | 2017-05-01 A | 2017-05-02 A | 3 | 100% |  |
| 6 |  | Cheklist | 1d | 2017-05-01 A | 2017-05-01 A | 3 | 100% |  |
| 7 | 1.2 | **Planejamento** | 2d | 2017-04-24 | 2017-04-25 |  | 100% |  |
| 8 |  | Registro de requisitos | 1d | 2017-05-01 A | 2017-05-01 A | 3 | 100% |  |
| 9 |  | Registro de riscos | 1d | 2017-05-01 A | 2017-05-01 A | 3 | 100% |  |
| 10 |  | Orçamento definitivo | 2d | 2017-05-03 A | 2017-05-04 A | 4 | 100% |  |
| 11 |  | Cronograma definitivo | 1d | 2017-05-03 A | 2017-05-03 A | 5 | 100% |  |
| 12 |  | Plano do projeto definitivo | 2d | 2017-04-26 A | 2017-04-27 A | 2 | 100% |  |
| 13 | 1.3 | **Release 01** | 1d | 2017-04-26 | 2017-04-26 |  | 100% |  |
| 14 | 1.3.1 | **Implementação / Teste** | 1d | 2017-04-26 | 2017-04-26 |  | 100% |  |
| 15 | 1.3.1.1 | **Modelagem UML** | 1d | 2017-04-26 | 2017-04-26 |  | 100% |  |
| 16 |  | Diagrama de caso de uso | 1d | 2017-05-01 A | 2017-05-01 A | 3 | 100% |  |
| 17 |  | Diagrama de classes | 1d | 2017-05-01 A | 2017-05-01 A | 3 | 100% |  |
| 18 | 1.3.1.2 | **Implementação** | 1d | 2017-04-28 A | 2017-04-28 | 15 | 100% |  |
| 19 | 1.3.1.2.1 | **[RFC01] Manter Usuários** | 1d | 2017-04-28 A | 2017-04-28 |  | 100% |  |
| 20 |  | [RFS01] Cadastrar Usuários | 2d | 2017-04-28 A | 2017-05-01 A | 15 | 100% |  |
| 21 |  | [RFS02] Consultar Usuários | 2d | 2017-05-02 A | 2017-05-03 A | 20 | 100% |  |
| 22 |  | [RFS03] Alterar Usuários | 2d | 2017-05-02 A | 2017-05-03 A | 20 | 100% |  |
| 23 |  | [RFS04] Remover Usuários | 2d | 2017-05-02 A | 2017-05-03 A | 20 | 100% |  |
| 24 | 1.3.1.2.2 | **[RFC02] Manter Contato** | 1d | 2017-04-28 A | 2017-04-28 |  | 100% |  |
| 25 |  | [RFS05] Cadastrar Contato | 2d | 2017-04-28 A | 2017-05-01 A | 15 | 100% |  |
| 26 |  | [RFS06] Consultar Contato | 2d | 2017-05-02 A | 2017-05-03 A | 25 | 100% |  |
| 27 |  | [RFS07] Alterar Contato | 2d | 2017-05-02 A | 2017-05-03 A | 25 | 100% |  |
| 28 |  | [RFS08] Remover Contato | 2d | 2017-05-02 A | 2017-05-03 A | 25 | 100% |  |
| 29 | 1.3.1.2.3 | **Teste** | 1d | 2017-05-01 A | 2017-05-02 A |  | 100% |  |
| 30 |  | [RFC01] Manter Usuários | 1d | 2017-05-01 A | 2017-05-02 A | 19 | 100% |  |
| 31 |  | [RFC02] Manter Contato | 1d | 2017-05-01 A | 2017-05-02 A | 24 | 100% |  |
| 32 | 1.4 | **Release 02** | 7d | 2017-05-23 A | 2017-05-31 |  | 100% |  |
| 33 | 1.4.1 | **Implementação / Teste** | 6d | 2017-05-23 A | 2017-05-30 |  | 100% |  |
| 34 | 1.4.1.1 | **Implementação** | 6d | 2017-05-23 A | 2017-05-30 |  | 100% |  |
| 35 | 1.4.1.1.1 | **[RFC03] Manter Conta Bancária** | 3d | 2017-05-23 A | 2017-05-25 |  | 100% |  |
| 36 |  | [RFS09] Cadastrar Conta Bancaria | 2d | 2017-05-23 A | 2017-05-24 A | 15 | 100% |  |
| 37 |  | [RFS10] Consultar Conta Bancária | 2d | 2017-05-25 A | 2017-05-26 A | 36 | 100% |  |
| 38 |  | [RFS11] Alterar Conta Bancaria | 2d | 2017-05-25 A | 2017-05-26 A | 36 | 100% |  |
| 39 |  | [RFS12] Remover Conta Bancaria | 2d | 2017-05-25 A | 2017-05-26 A | 36 | 100% |  |
| 40 | 1.4.1.1.2 | **[RFC04] Manter Despesas** | 3d | 2017-05-23 A | 2017-05-25 |  | 100% |  |
| 41 |  | [RFS13] Cadastrar Despesas | 2d | 2017-05-23 A | 2017-05-24 A | 15 | 100% |  |
| 42 |  | [RFS14] Consultar Despesas | 2d | 2017-05-25 A | 2017-05-26 A | 41 | 100% |  |
| 43 |  | [RFS15] Alterar Despesas | 2d | 2017-05-25 A | 2017-05-26 A | 41 | 100% |  |
| 44 |  | [RFS16] Remover Despesas | 2d | 2017-05-25 A | 2017-05-26 A | 41 | 100% |  |
| 45 | 1.4.2 | **Teste** | 1d | 2017-05-24 | 2017-05-25 |  | 100% |  |
| 46 |  | [RFC03] Manter Conta Bancária | 1d | 2017-05-26 A | 2017-05-26 A | 35 | 100% |  |
| 47 |  | [RFC04] Manter Despesas | 1d | 2017-05-26 A | 2017-05-26 A | 40 | 100% |  |
| 48 | 1.5 | **Release 03** | 7d? | 2017-05-30 A | 2017-06-07 |  | 77% |  |
| 49 | 1.5.1 | **Implementação / Teste** | 3d | 2017-05-30 A | 2017-06-01 |  | 91% |  |
| 50 | 1.5.1.1 | **Implementação** | 3d | 2017-05-30 A | 2017-06-01 |  | 91% |  |
| 51 | 1.5.1.1.1 | **[RFC05] Manter Receitas** | 4d | 2017-05-30 A | 2017-06-02 |  | 89% |  |
| 52 |  | [RFS17] Cadastrar Receitas | 3d | 2017-05-30 A | 2017-06-01 | 15 | 67% | 19d |
| 53 |  | [RFS18] Consultar Receitas | 2d | 2017-06-01 A | 2017-06-02 A | 52 | 100% |  |
| 54 |  | [RFS19] Alterar Receitas | 2d | 2017-06-01 A | 2017-06-02 A | 52 | 100% |  |
| 55 |  | [RFS20] Remover Receitas | 2d | 2017-06-01 A | 2017-06-02 A | 52 | 100% |  |
| 56 | 1.5.1.1.2 | **[RFC05] Gerar Relatórios** | 3d | 2017-05-30 A | 2017-06-01 |  | 100% |  |
| 57 |  | [RFS21] Gerar Relatório | 2d | 2017-05-30 A | 2017-05-31 A | 15 | 100% |  |
| 58 | 1.5.2 | **Teste** | 1d? | 2017-05-31 | 2017-06-01 |  |  |  |
| 59 |  | [RFC05] Manter Receitas | 1d | 2017-06-05 | 2017-06-05 | 51 |  | 17d |
| 60 |  | [RFC05] Gerar Relatório | 1d | 2017-06-02 | 2017-06-02 | 56 |  | 18d |
| 61 | 1.6 | **Release 4** | 14d? | 2017-03-20 | 2017-04-06 |  |  |  |
| 62 | 1.6.1 | **Fechamento** | 14d? | 2017-03-20 | 2017-04-06 |  |  |  |
| 63 |  | Implantação | 1d? | 2017-06-08 | 2017-06-08 | 48 |  |  |
| 64 |  | Avaliação | 1d? | 2017-06-15 | 2017-06-15 | 63 |  |  |
| 65 |  | Conclusão | 0d? | 2017-06-22 | 2017-06-22 | 64 |  |  |

## Version 2 (saved 2017-06-05)

Note of the change: Documentos

Last finish stays 2017-06-30. Complete tasks 35 → 36.

Changed:

| ID | Task | Finish | Complete | Total float |
| --- | --- | --- | --- | --- |
| 1 | **Sistema Contabil** |  | 93% → 94% |  |
| 48 | **Release 03** |  | 77% → 85% |  |
| 49 | **Implementação / Teste** |  | 91% → 100% |  |
| 50 | **Implementação** |  | 91% → 100% |  |
| 51 | **[RFC05] Manter Receitas** | 2017-06-02 A | 89% → 100% |  |
| 52 | [RFS17] Cadastrar Receitas | 2017-06-01 A | 67% → 100% | 19d → none |

## Version 3 (saved 2017-06-05)

Note of the change: Correção da Master

Last finish stays 2017-06-30. Complete tasks 36 → 33.

Changed:

| ID | Task | Start | Finish | Complete | Total float |
| --- | --- | --- | --- | --- | --- |
| 1 | **Sistema Contabil** |  |  | 94% → 90% |  |
| 13 | **Release 01** |  |  | 100% → 94% |  |
| 14 | **Implementação / Teste** |  |  | 100% → 94% |  |
| 18 | **Implementação** |  |  | 100% → 93% |  |
| 19 | **[RFC01] Manter Usuários** |  |  | 100% → 85% |  |
| 22 | [RFS03] Alterar Usuários |  | 2017-05-03 A → 2017-05-03 | 100% → 70% | none → 42d |
| 23 | [RFS04] Remover Usuários |  | 2017-05-03 A → 2017-05-03 | 100% → 70% | none → 42d |
| 48 | **Release 03** |  |  | 85% → 69% |  |
| 49 | **Implementação / Teste** |  |  | 100% → 82% |  |
| 50 | **Implementação** |  |  | 100% → 82% |  |
| 56 | **[RFC05] Gerar Relatórios** | 2017-05-30 A → 2017-05-30 |  | 100% → 0% |  |
| 57 | [RFS21] Gerar Relatório | 2017-05-30 A → 2017-05-30 | 2017-05-31 A → 2017-05-31 | 100% → 0% | none → 19d |

## Version 4 (saved 2017-06-11)

Note of the change: Cronogramaqueeuesperoqueestejacertoesejaoultimo

Last finish stays 2017-06-30. Complete tasks 33 → 38.

Added:

| ID | Task | Duration | Start | Finish | Resources |
| --- | --- | --- | --- | --- | --- |
| 66 | **DESENVOLVIMENTO VERSÃO LARAVEL** | 8d | 2017-06-01 | 2017-06-12 |  |
| 67 | **Release 01** | 2d | 2017-03-30 | 2017-03-31 |  |
| 68 | **Implementação / Teste** | 0d | 2017-03-30 | 2017-03-30 |  |
| 69 | **Implementação** | 0d | 2017-03-30 | 2017-03-30 |  |
| 70 | **[RFC01] Manter Usuários** | 0d | 2017-03-30 | 2017-03-30 |  |
| 71 | [RFS01] Cadastrar Usuários | 1d | 2017-03-30 | 2017-03-30 | Any |
| 72 | [RFS02] Consultar Usuários | 1d | 2017-03-30 | 2017-03-30 | Any |
| 73 | [RFS03] Alterar Usuários | 1d | 2017-03-30 | 2017-03-30 | Any |
| 74 | [RFS04] Remover Usuários | 1d | 2017-03-30 | 2017-03-30 | Any |
| 75 | **[RFC02] Manter Contato** | 0.5d | 2017-03-30 | 2017-03-30 |  |
| 76 | [RFS05] Cadastrar Contato | 1d | 2017-03-30 | 2017-03-30 | Henrique |
| 77 | [RFS06] Consultar Contato | 1d | 2017-03-30 | 2017-03-30 | Henrique |
| 78 | [RFS07] Alterar Contato | 1d | 2017-03-30 | 2017-03-30 | Henrique |
| 79 | [RFS08] Remover Contato | 1d | 2017-03-30 | 2017-03-30 | Henrique |
| 80 | **Teste** | 0.5d | 2017-03-30 | 2017-03-30 |  |
| 81 | [RFC01] Manter Usuários | 0.5d | 2017-03-30 | 2017-03-30 | Matheus |
| 82 | [RFC02] Manter Contato | 0.5d | 2017-03-30 | 2017-03-30 | Matheus |
| 83 | **Release 02** | 2d | 2017-03-30 | 2017-03-31 |  |
| 84 | **Implementação / Teste** | 0d | 2017-03-30 | 2017-03-30 |  |
| 85 | **Implementação** | 0d | 2017-03-30 | 2017-03-30 |  |
| 86 | **[RFC03] Manter Conta Bancária** | 0d | 2017-03-30 | 2017-03-30 |  |
| 87 | [RFS09] Cadastrar Conta Bancaria | 1d | 2017-03-30 | 2017-03-30 | Felipe |
| 88 | [RFS10] Consultar Conta Bancária | 1d | 2017-03-30 | 2017-03-30 | Felipe |
| 89 | [RFS11] Alterar Conta Bancaria | 1d | 2017-03-30 | 2017-03-30 | Felipe |
| 90 | [RFS12] Remover Conta Bancaria | 1d | 2017-03-30 | 2017-03-30 | Felipe |
| 91 | **[RFC04] Manter Despesas** | 0d | 2017-03-30 | 2017-03-30 |  |
| 92 | [RFS13] Cadastrar Despesas | 1d | 2017-03-30 | 2017-03-30 | Clayton |
| 93 | [RFS14] Consultar Despesas | 1d | 2017-03-30 | 2017-03-30 | Clayton |
| 94 | [RFS15] Alterar Despesas | 1d | 2017-03-30 | 2017-03-30 | Clayton |
| 95 | [RFS16] Remover Despesas | 1d | 2017-03-30 | 2017-03-30 | Clayton |
| 96 | **Teste** | 0d | 2017-03-30 | 2017-03-30 |  |
| 97 | [RFC03] Manter Conta Bancária | 1d | 2017-03-30 | 2017-03-30 | Matheus |
| 98 | [RFC04] Manter Despesas | 1d | 2017-03-30 | 2017-03-30 | Matheus |
| 99 | **Release 03** | 2d | 2017-03-30 | 2017-03-31 |  |
| 100 | **Implementação / Teste** | 0d | 2017-03-30 | 2017-03-30 |  |
| 101 | **Implementação** | 0d | 2017-03-30 | 2017-03-30 |  |
| 102 | **[RFC05] Manter Receitas** | 0d | 2017-03-30 | 2017-03-30 |  |
| 103 | [RFS17] Cadastrar Receitas | 1d | 2017-03-30 | 2017-03-30 | Matheus |
| 104 | [RFS18] Consultar Receitas | 1d | 2017-03-30 | 2017-03-30 | Matheus |
| 105 | [RFS19] Alterar Receitas | 1d | 2017-03-30 | 2017-03-30 | Matheus |
| 106 | [RFS20] Remover Receitas | 1d | 2017-03-30 | 2017-03-30 | Matheus |
| 107 | **[RFC06] Gerar Relatórios** | 0d | 2017-03-30 | 2017-03-30 |  |
| 108 | [RFS21] Gerar Relatório | 1d | 2017-03-30 | 2017-03-30 | Any |
| 109 | **Teste** | 0d | 2017-03-30 | 2017-03-30 |  |
| 110 | [RFC05] Manter Receitas | 0.5d | 2017-03-30 | 2017-03-30 | Felipe |
| 111 | [RFC06] Gerar Relatório | 0.5d | 2017-03-30 | 2017-03-30 | Felipe |
| 112 | **Release 04** | 2d | 2017-03-30 | 2017-03-31 |  |
| 113 | **Implementação / Teste** | 0d | 2017-03-30 | 2017-03-30 |  |
| 114 | **Implementação** | 0d | 2017-03-30 | 2017-03-30 |  |
| 115 | **[RFC07] Manter Receitas** | 0d | 2017-03-30 | 2017-03-30 |  |
| 116 | [RFS22] Cadastrar Economias | 1d | 2017-03-30 | 2017-03-30 | Henrique |
| 117 | [RFS23] Consultar Economias | 1d | 2017-03-30 | 2017-03-30 | Henrique |
| 118 | [RFS24] Alterar Economias | 1d | 2017-03-30 | 2017-03-30 | Henrique |
| 119 | [RFS25] Remover Economias | 1d | 2017-03-30 | 2017-03-30 | Henrique |
| 120 | **Teste** | 0d | 2017-03-30 | 2017-03-30 |  |
| 121 | [RFC07] Manter Economias | 0.5d | 2017-03-30 | 2017-03-30 | Matheus |
| 122 | **Fechamento** | 0d | 2017-03-30 | 2017-03-30 |  |
| 123 | Implantação | 1.88d | 2017-03-30 | 2017-03-31 | Any; Henrique |
| 124 | Avaliação | 0.62d | 2017-03-30 | 2017-03-30 | Matheus |
| 125 | Conclusão | 0.31d | 2017-03-30 | 2017-03-30 | Matheus; Felipe |

Changed:

| ID | Task | Start | Finish | Duration | Complete | Total float | Other |
| --- | --- | --- | --- | --- | --- | --- | --- |
| 1 | **Sistema Contabil** |  |  |  | 90% → 70% |  |  |
| 3 | DRE |  | 2017-04-28 A → 2017-05-01 A (+3d) | 5d → 6d |  |  |  |
| 13 | **Release 01** |  |  |  | 94% → 100% |  |  |
| 14 | **Implementação / Teste** |  |  |  | 94% → 100% |  |  |
| 18 | **Implementação** |  |  |  | 93% → 100% |  |  |
| 19 | **[RFC01] Manter Usuários** |  |  |  | 85% → 100% |  |  |
| 20 | [RFS01] Cadastrar Usuários |  | 2017-05-01 A → 2017-05-02 A (+1d) | 2d → 3d |  |  |  |
| 21 | [RFS02] Consultar Usuários |  | 2017-05-03 A → 2017-05-04 A (+1d) | 2d → 3d |  |  |  |
| 22 | [RFS03] Alterar Usuários |  | 2017-05-03 → 2017-05-04 A (+1d) | 2d → 3d | 70% → 100% | 42d → none |  |
| 23 | [RFS04] Remover Usuários |  | 2017-05-03 → 2017-05-04 A (+1d) | 2d → 3d | 70% → 100% | 42d → none |  |
| 25 | [RFS05] Cadastrar Contato |  | 2017-05-01 A → 2017-05-02 A (+1d) | 2d → 3d |  |  |  |
| 26 | [RFS06] Consultar Contato |  | 2017-05-03 A → 2017-05-04 A (+1d) | 2d → 3d |  |  |  |
| 27 | [RFS07] Alterar Contato |  | 2017-05-03 A → 2017-05-04 A (+1d) | 2d → 3d |  |  |  |
| 28 | [RFS08] Remover Contato |  | 2017-05-03 A → 2017-05-04 A (+1d) | 2d → 3d |  |  |  |
| 29 | **Teste** |  | 2017-05-02 A → 2017-05-02 |  |  |  |  |
| 30 | [RFC01] Manter Usuários |  | 2017-05-02 A → 2017-05-04 A (+2d) | 1d → 3d |  |  |  |
| 31 | [RFC02] Manter Contato |  | 2017-05-02 A → 2017-05-04 A (+2d) | 1d → 3d |  |  |  |
| 41 | [RFS13] Cadastrar Despesas |  |  |  |  |  | resources Felipe → Felipe; Clayton |
| 42 | [RFS14] Consultar Despesas |  |  |  |  |  | resources Felipe → Felipe; Clayton |
| 43 | [RFS15] Alterar Despesas |  |  |  |  |  | resources Felipe → Felipe; Clayton |
| 44 | [RFS16] Remover Despesas |  |  |  |  |  | resources Felipe → Felipe; Clayton |
| 48 | **Release 03** |  |  |  | 69% → 100% |  |  |
| 49 | **Implementação / Teste** |  |  |  | 82% → 100% |  |  |
| 50 | **Implementação** |  |  |  | 82% → 100% |  |  |
| 52 | [RFS17] Cadastrar Receitas |  |  |  |  |  | resources Any → Any; Henrique |
| 53 | [RFS18] Consultar Receitas |  |  |  |  |  | resources Any → Any; Henrique |
| 54 | [RFS19] Alterar Receitas |  |  |  |  |  | resources Any → Any; Henrique |
| 55 | [RFS20] Remover Receitas |  |  |  |  |  | resources Any → Any; Henrique |
| 56 | **[RFC05] Gerar Relatórios** | 2017-05-30 A |  |  | 0% → 100% |  |  |
| 57 | [RFS21] Gerar Relatório | 2017-05-30 A | 2017-05-31 A |  | 0% → 100% | 19d → none |  |
| 58 | **Teste** |  |  |  | 0% → 100% |  |  |
| 59 | [RFC05] Manter Receitas | 2017-06-05 A | 2017-06-05 A |  | 0% → 100% | 17d → none |  |
| 60 | [RFC05] Gerar Relatório | 2017-06-02 A | 2017-06-02 A |  | 0% → 100% | 18d → none |  |

## Version 5 (saved 2017-06-12)

Note of the change: Cronogramaqueeuesperoqueestejacertoesejaoultimo

Last finish stays 2017-06-30. Complete tasks 38 → 73.

Changed:

| ID | Task | Start | Finish | Duration | Complete | Total float |
| --- | --- | --- | --- | --- | --- | --- |
| 1 | **Sistema Contabil** |  |  |  | 70% → 98% |  |
| 48 | **Release 03** |  |  | 7d? → 7d |  |  |
| 66 | **DESENVOLVIMENTO VERSÃO LARAVEL** |  |  |  | 0% → 100% |  |
| 67 | **Release 01** | 2017-03-30 A |  |  | 0% → 100% |  |
| 68 | **Implementação / Teste** | 2017-03-30 A | 2017-03-30 A |  | 0% → 100% |  |
| 69 | **Implementação** | 2017-03-30 A | 2017-03-30 A |  | 0% → 100% |  |
| 70 | **[RFC01] Manter Usuários** | 2017-03-30 A | 2017-03-30 A |  | 0% → 100% |  |
| 71 | [RFS01] Cadastrar Usuários | 2017-03-30 A | 2017-03-30 A |  | 0% → 100% |  |
| 72 | [RFS02] Consultar Usuários | 2017-03-30 A | 2017-03-30 A |  | 0% → 100% |  |
| 73 | [RFS03] Alterar Usuários | 2017-03-30 A | 2017-03-30 A |  | 0% → 100% |  |
| 74 | [RFS04] Remover Usuários | 2017-03-30 A | 2017-03-30 A |  | 0% → 100% |  |
| 75 | **[RFC02] Manter Contato** | 2017-03-30 A | 2017-03-30 A |  | 0% → 100% |  |
| 76 | [RFS05] Cadastrar Contato | 2017-03-30 A | 2017-03-30 A |  | 0% → 100% |  |
| 77 | [RFS06] Consultar Contato | 2017-03-30 A | 2017-03-30 A |  | 0% → 100% |  |
| 78 | [RFS07] Alterar Contato | 2017-03-30 A | 2017-03-30 A |  | 0% → 100% |  |
| 79 | [RFS08] Remover Contato | 2017-03-30 A | 2017-03-30 A |  | 0% → 100% |  |
| 80 | **Teste** | 2017-03-30 A | 2017-03-30 A |  | 0% → 100% |  |
| 81 | [RFC01] Manter Usuários | 2017-03-30 A | 2017-03-30 A |  | 0% → 100% |  |
| 82 | [RFC02] Manter Contato | 2017-03-30 A | 2017-03-30 A |  | 0% → 100% |  |
| 83 | **Release 02** | 2017-03-30 A |  |  | 0% → 100% |  |
| 84 | **Implementação / Teste** | 2017-03-30 A | 2017-03-30 A |  | 0% → 100% |  |
| 85 | **Implementação** | 2017-03-30 A | 2017-03-30 A |  | 0% → 100% |  |
| 86 | **[RFC03] Manter Conta Bancária** | 2017-03-30 A | 2017-03-30 A |  | 0% → 100% |  |
| 87 | [RFS09] Cadastrar Conta Bancaria | 2017-03-30 A | 2017-03-30 A |  | 0% → 100% |  |
| 88 | [RFS10] Consultar Conta Bancária | 2017-03-30 A | 2017-03-30 A |  | 0% → 100% |  |
| 89 | [RFS11] Alterar Conta Bancaria | 2017-03-30 A | 2017-03-30 A |  | 0% → 100% |  |
| 90 | [RFS12] Remover Conta Bancaria | 2017-03-30 A | 2017-03-30 A |  | 0% → 100% |  |
| 91 | **[RFC04] Manter Despesas** | 2017-03-30 A | 2017-03-30 A |  | 0% → 100% |  |
| 92 | [RFS13] Cadastrar Despesas | 2017-03-30 A | 2017-03-30 A |  | 0% → 100% |  |
| 93 | [RFS14] Consultar Despesas | 2017-03-30 A | 2017-03-30 A |  | 0% → 100% |  |
| 94 | [RFS15] Alterar Despesas | 2017-03-30 A | 2017-03-30 A |  | 0% → 100% |  |
| 95 | [RFS16] Remover Despesas | 2017-03-30 A | 2017-03-30 A |  | 0% → 100% |  |
| 96 | **Teste** | 2017-03-30 A | 2017-03-30 A |  | 0% → 100% |  |
| 97 | [RFC03] Manter Conta Bancária | 2017-03-30 A | 2017-03-30 A |  | 0% → 100% |  |
| 98 | [RFC04] Manter Despesas | 2017-03-30 A | 2017-03-30 A |  | 0% → 100% |  |
| 99 | **Release 03** | 2017-03-30 A |  |  | 0% → 100% |  |
| 100 | **Implementação / Teste** | 2017-03-30 A | 2017-03-30 A |  | 0% → 100% |  |
| 101 | **Implementação** | 2017-03-30 A | 2017-03-30 A |  | 0% → 100% |  |
| 102 | **[RFC05] Manter Receitas** | 2017-03-30 A | 2017-03-30 A |  | 0% → 100% |  |
| 103 | [RFS17] Cadastrar Receitas | 2017-03-30 A | 2017-03-30 A |  | 0% → 100% |  |
| 104 | [RFS18] Consultar Receitas | 2017-03-30 A | 2017-03-30 A |  | 0% → 100% |  |
| 105 | [RFS19] Alterar Receitas | 2017-03-30 A | 2017-03-30 A |  | 0% → 100% |  |
| 106 | [RFS20] Remover Receitas | 2017-03-30 A | 2017-03-30 A |  | 0% → 100% |  |
| 107 | **[RFC06] Gerar Relatórios** | 2017-03-30 A | 2017-03-30 A |  | 0% → 100% |  |
| 108 | [RFS21] Gerar Relatório | 2017-03-30 A | 2017-03-30 A |  | 0% → 100% |  |
| 109 | **Teste** | 2017-03-30 A | 2017-03-30 A |  | 0% → 100% |  |
| 110 | [RFC05] Manter Receitas | 2017-03-30 A | 2017-03-30 A |  | 0% → 100% |  |
| 111 | [RFC06] Gerar Relatório | 2017-03-30 A | 2017-03-30 A |  | 0% → 100% |  |
| 112 | **Release 04** | 2017-03-30 A | 2017-03-31 A |  | 0% → 100% |  |
| 113 | **Implementação / Teste** | 2017-03-30 A | 2017-03-30 A |  | 0% → 100% |  |
| 114 | **Implementação** | 2017-03-30 A | 2017-03-30 A |  | 0% → 100% |  |
| 115 | **[RFC07] Manter Receitas** | 2017-03-30 A | 2017-03-30 A |  | 0% → 100% |  |
| 116 | [RFS22] Cadastrar Economias | 2017-03-30 A | 2017-03-30 A |  | 0% → 100% |  |
| 117 | [RFS23] Consultar Economias | 2017-03-30 A | 2017-03-30 A |  | 0% → 100% |  |
| 118 | [RFS24] Alterar Economias | 2017-03-30 A | 2017-03-30 A |  | 0% → 100% |  |
| 119 | [RFS25] Remover Economias | 2017-03-30 A | 2017-03-30 A |  | 0% → 100% |  |
| 120 | **Teste** | 2017-03-30 A | 2017-03-30 A |  | 0% → 100% |  |
| 121 | [RFC07] Manter Economias | 2017-03-30 A | 2017-03-30 A |  | 0% → 100% |  |
| 122 | **Fechamento** | 2017-03-30 A |  |  | 0% → 100% |  |
| 123 | Implantação | 2017-03-30 A | 2017-03-31 A |  | 0% → 100% | 65.12d → none |
| 124 | Avaliação | 2017-03-30 A | 2017-03-30 A |  | 0% → 100% |  |
| 125 | Conclusão | 2017-03-30 A | 2017-03-30 A |  | 0% → 100% | 66.69d → none |
